Schedule from MS Project, 2019-08-13 to 2019-11-06, status date 2019-09-29, costs in $, A marks actual dates.

## Calendars

- Estándar: Mon-Fri 09:00-13:00, 15:00-19:00; Sat-Sun off.

## Resources

| Resource | Rate |
| --- | --- |
| Jannio Chaverri | 40 |
| Sofía Mannix | 40 |
| Erick Muñoz | 40 |
| David Valverde | 40 |
| Gabriel Vindas | 40 |
| Arquitecto Erick Muñoz | 80 |
| Proyect Manager Jannio | 100 |
| Jannio | 40 |
| Sofía | 40 |
| Erick | 40 |
| David | 40 |
| Gabriel | 40 |

## Schedule

| ID | WBS | Task | Duration | Start | Finish | Predecessors | Complete | Remaining | Baseline start | Baseline finish | Baseline duration | Total slack | Free slack | Constraint | Resources | Work | Actual work | Cost | Baseline cost | Actual cost | Text10 |
| --- | --- | --- | --- | --- | --- | --- | --- | --- | --- | --- | --- | --- | --- | --- | --- | --- | --- | --- | --- | --- | --- |
| 1 | 1 | **Proyecto Memorias Urbanas** | 61.25d? | 2019-08-13 09:00 A | 2019-11-06 11:00 |  | 39% | 37.44d? | 2019-08-13 09:00 | 2019-11-06 11:00 | 61.25d? | 0d |  |  |  | 1718h | 561h | 78,573.55 | 80,076 | 28,480.21 | 67% |
| 2 | 1.1 | **Etapa 0 - Gestión del Proyecto** | 11.5d | 2019-08-13 09:00 A | 2019-08-28 13:00 |  | 87% | 1.46d | 2019-08-13 09:00 | 2019-08-27 19:00 | 11d | 49.75d |  |  |  | 148h | 139h | 11,860 | 12,480 | 10,960 | 100% |
| 3 | 1.1.1 | **Fase 0.1 Investigación del Estado del Proyecto** | 11.5d | 2019-08-13 09:00 A | 2019-08-28 13:00 A |  | 100% |  | 2019-08-13 09:00 | 2019-08-27 19:00 | 11d |  |  |  |  | 135h | 135h | 10,560 | 11,180 | 10,560 | 100% |
| 4 | 1.1.1.1 | Reunión de Requeriminetos / Minuta | 2h | 2019-08-13 09:00 A | 2019-08-13 11:00 A |  | 100% |  | 2019-08-13 09:00 | 2019-08-13 19:00 | 8h |  |  | finish no earlier than 2019-08-13 19:00 | Arquitecto Erick Muñoz; Proyect Manager Jannio | 4h | 4h | 360 | 1,440 | 360 | 100% |
| 5 | 1.1.1.2 | Estudio de la documentación existente del proyecto | 3h | 2019-08-13 09:00 A | 2019-08-13 12:00 A |  | 100% |  | 2019-08-13 09:00 | 2019-08-13 12:00 | 3h |  |  |  | Arquitecto Erick Muñoz; Proyect Manager Jannio | 6h | 6h | 540 | 540 | 540 | 100% |
| 6 | 1.1.1.3 | Redactar Anteproyecto | 37h | 2019-08-15 09:00 A | 2019-08-21 16:00 A | 4 | 100% |  | 2019-08-15 09:00 | 2019-08-21 19:00 | 40h |  |  |  | Proyect Manager Jannio; Arquitecto Erick Muñoz | 74h | 74h | 6,660 | 7,200 | 6,660 | 100% |
| 7 | 1.1.1.4 | Asesoramiento con desarrollador del equipo original | 7h | 2019-08-27 16:00 A | 2019-08-28 13:00 A | 4 | 100% |  | 2019-08-27 16:00 | 2019-08-27 19:00 | 3h |  |  |  | Proyect Manager Jannio; David; Erick; Gabriel; Jannio; Sofía | 42h | 42h | 2,100 | 900 | 2,100 | 100% |
| 8 | 1.1.1.5 | Definir el Cronograma | 6h | 2019-08-14 09:00 A | 2019-08-14 17:00 A | 4 | 100% |  | 2019-08-14 09:00 | 2019-08-14 19:00 | 8h |  |  |  | Proyect Manager Jannio | 6h | 6h | 600 | 800 | 600 | 100% |
| 9 | 1.1.1.6 | Entrega del Anteproyecto | 3h | 2019-08-22 09:00 A | 2019-08-22 12:00 A | 6 | 100% |  | 2019-08-22 09:00 | 2019-08-22 12:00 | 3h |  |  |  | Proyect Manager Jannio | 3h | 3h | 300 | 300 | 300 | 100% |
| 10 | 1.1.2 | **Fase 0.2 Formalización del Proyecto** | 1.5d | 2019-08-22 12:00 A | 2019-08-23 18:00 |  | 25% | 1.12d | 2019-08-22 12:00 | 2019-08-23 18:00 | 1.5d | 52.38d |  |  |  | 12h | 3h | 1,200 | 1,200 | 300 | 100% |
| 11 | 1.1.2.1 | Reunión de Revisión de Requerimientos | 12h | 2019-08-22 12:00 A | 2019-08-23 18:00 | 9 | 25% | 9h | 2019-08-22 12:00 | 2019-08-23 18:00 | 12h | 52.38d |  |  | Proyect Manager Jannio | 12h | 3h | 1,200 | 1,200 | 300 | 100% |
| 12 | 1.1.3 | Hito 1: Acta de Inicio del Proyecto | 1h | 2019-08-23 18:00 A | 2019-08-23 19:00 A | 11 | 100% |  | 2019-08-23 18:00 | 2019-08-23 19:00 | 1h |  |  |  | Proyect Manager Jannio | 1h | 1h | 100 | 100 | 100 | 100% |
| 13 | 1.2 | **Etapa I - Integración y Desarrollo** | 13d | 2019-09-19 09:00 A | 2019-10-07 19:00 |  | 43% | 7.36d | 2019-09-19 09:00 | 2019-10-07 19:00 | 13d |  |  |  |  | 904h | 402h | 36,726.88 | 37,516 | 16,586.88 | 100% |
| 14 | 1.2.1 | **Fase I.1 Análisis** | 6d | 2019-09-19 09:00 A | 2019-09-26 19:00 A | 12 | 100% |  | 2019-09-19 09:00 | 2019-09-27 19:00 | 7d |  |  |  |  | 198h | 198h | 8,426.88 | 10,416 | 8,426.88 | 100% |
| 15 | 1.2.1.1 | Análisis de la Base de Datos | 9.68h | 2019-09-19 18:00 A | 2019-09-23 09:40 A |  | 100% |  | 2019-09-19 18:00 | 2019-09-23 12:00 | 12h |  |  |  | Jannio Chaverri [20%]; Arquitecto Erick Muñoz; David; Erick; Gabriel; Jannio; Sofía | 60h | 60h | 2,786.88 | 3,456 | 2,786.88 | 100% |
| 16 | 1.2.1.2 | Análisis de la Usabilidad de la Aplicación | 1h | 2019-09-23 09:00 A | 2019-09-23 10:00 A |  | 100% |  | 2019-09-23 09:00 | 2019-09-23 10:00 | 1h |  |  |  | Arquitecto Erick Muñoz; David; Erick; Gabriel; Jannio; Sofía | 6h | 6h | 280 | 280 | 280 | 100% |
| 17 | 1.2.1.3 | Análisis del Código Fuente de la Aplicación | 24h | 2019-09-24 09:00 A | 2019-09-26 19:00 A | 16 | 100% |  | 2019-09-24 09:00 | 2019-09-27 19:00 | 32h |  |  |  | David; Erick; Gabriel; Jannio; Sofía | 120h | 120h | 4,800 | 6,400 | 4,800 | 100% |
| 18 | 1.2.1.4 | Analisís de los Datos a Registrar en la BD | 2h | 2019-09-19 09:00 A | 2019-09-19 11:00 A |  | 100% |  | 2019-09-19 09:00 | 2019-09-19 10:00 | 1h |  |  |  | Arquitecto Erick Muñoz; David; Erick; Gabriel; Jannio; Sofía | 12h | 12h | 560 | 280 | 560 | 100% |
| 19 | 1.2.2 | Hito 2: Acta de Entrega de Casos de Prueba | 1h | 2019-09-27 09:00 | 2019-09-27 10:00 | 15, 16, 17, 18 |  |  | 2019-09-30 09:00 | 2019-09-30 10:00 | 1h | 16.08d |  |  | Proyect Manager Jannio | 1h |  | 100 | 100 |  | 100% |
| 20 | 1.2.3 | **Fase I.2 Desarrollo de Mejoras** | 9.62d | 2019-09-27 09:00 A | 2019-10-10 16:00 | 14 | 27% | 7.03d | 2019-09-30 09:00 | 2019-10-14 16:00 | 10.62d | 9.12d | 6.38d |  |  | 665h | 179h | 26,600 | 25,400 | 7,160 | 100% |
| 21 | 1.2.3.1 | Desarrollo de Mejoras Visuales y de Usabilidad | 30h | 2019-09-30 09:00 A | 2019-10-07 17:00 |  | 70% | 9h | 2019-09-30 09:00 | 2019-10-04 19:00 | 24h | 12d |  |  | David; Erick; Gabriel; Jannio; Sofía | 150h | 105h | 6,000 | 4,800 | 4,200 | 100% |
| 22 | 1.2.3.2 | Implementación de la Funcionalidad Recuperar Contraseña | 8h | 2019-09-27 09:00 | 2019-09-27 19:00 |  |  |  | 2019-09-30 09:00 | 2019-09-30 19:00 | 8h | 17.75d |  |  | David; Erick; Gabriel; Jannio; Sofía | 40h |  | 1,600 | 1,600 |  | 100% |
| 23 | 1.2.3.3 | Implementación de Código QR | 37h | 2019-09-30 09:00 A | 2019-10-04 16:00 |  | 40% | 22.2h | 2019-09-30 09:00 | 2019-10-04 16:00 | 37h | 13.12d |  |  | David; Erick; Gabriel; Jannio; Sofía | 185h | 74h | 7,400 | 7,400 | 2,960 | 100% |
| 24 | 1.2.3.4 | Implementación de la Funcionalidad "Dato del Día" | 29h | 2019-09-30 09:00 | 2019-10-04 11:00 |  |  |  | 2019-10-01 09:00 | 2019-10-07 11:00 | 29h | 13.5d |  |  | David; Erick; Gabriel; Jannio; Sofía | 145h |  | 5,800 | 5,800 |  | 100% |
| 25 | 1.2.3.5 | Implementación de las Notificaciones Push | 29h | 2019-10-07 09:00 | 2019-10-10 16:00 |  |  |  | 2019-10-09 09:00 | 2019-10-14 16:00 | 29h | 9.12d |  |  | David; Erick; Gabriel; Jannio; Sofía | 145h |  | 5,800 | 5,800 |  | 100% |

| ID | WBS | Task | Type | Duration | Start | Finish | Predecessors | Complete | Remaining | Baseline start | Baseline finish | Baseline duration | Total slack | Free slack | Resources | Work | Actual work | Cost | Baseline cost | Actual cost | Text10 |
| --- | --- | --- | --- | --- | --- | --- | --- | --- | --- | --- | --- | --- | --- | --- | --- | --- | --- | --- | --- | --- | --- |
| 26 | 1.2.4 | **Fase I.3 Registro de Datos** |  | 1d | 2019-09-27 09:00 A | 2019-09-27 19:00 |  | 63% | 0.38d | 2019-09-30 09:00 | 2019-09-30 19:00 | 1d | 15.21d |  |  | 40h | 25h | 1,600 | 1,600 | 1,000 | 100% |
| 27 | 1.2.4.1 | Registro de los Datos Proporcionados por el Cliente a la Base de Datos |  | 8h | 2019-09-27 09:00 A | 2019-09-27 19:00 | 14 | 63% | 3h | 2019-09-30 09:00 | 2019-09-30 19:00 | 8h | 15.21d | 15d | David; Erick; Gabriel; Jannio; Sofía | 40h | 25h | 1,600 | 1,600 | 1,000 | 100% |
| 28 | 1.3 | **Etapa II - Pruebas** |  | 12.25d | 2019-10-21 09:00 A | 2019-11-06 11:00 |  | 3% | 11.86d | 2019-10-21 09:00 | 2019-11-06 11:00 | 12.25d |  |  |  | 586h | 20h | 25,746.67 | 25,840 | 933.33 | 0% |
| 29 | 1.3.1 | **Fase II. 1 Pruebas a la Base de Datos** |  | 1d | 2019-10-21 09:00 A | 2019-10-21 19:00 |  | 34% | 0.66d | 2019-10-21 09:00 | 2019-10-21 19:00 | 1d | 11.25d |  |  | 58h | 20h | 2,706.67 | 2,800 | 933.33 | 0% |
| 30 | 1.3.1.1 | Revisión de Datos Registrados |  | 8h | 2019-10-21 09:00 A | 2019-10-21 19:00 | 27 | 21% | 6.33h | 2019-10-21 09:00 | 2019-10-21 19:00 | 8h | 11.25d |  | Arquitecto Erick Muñoz; David; Erick; Gabriel; Jannio; Sofía | 48h | 10h | 2,240 | 2,240 | 466.67 | 0% |
| 31 | 1.3.1.2 | Pruebas de Conexión a la Base de Datos |  | 1.67h | 2019-10-21 09:00 A | 2019-10-21 10:40 A | 13 | 100% |  | 2019-10-21 09:00 | 2019-10-21 11:00 | 2h |  |  | Arquitecto Erick Muñoz; David; Erick; Gabriel; Jannio; Sofía | 10h | 10h | 466.67 | 560 | 466.67 | 0% |
| 32 | 1.3.2 | **Fase II.2 Pruebas de las Nuevas Funcionalidades** |  | 5d | 2019-10-21 09:00 | 2019-10-25 19:00 |  |  |  | 2019-10-21 09:00 | 2019-10-25 19:00 | 5d | 2.25d | 0d |  | 384h |  | 16,320 | 16,320 |  | 0% |
| 33 | 1.3.2.1 | Pruebas Funcionalidad Código QR |  | 24h | 2019-10-21 09:00 | 2019-10-23 19:00 | 20 |  |  | 2019-10-21 09:00 | 2019-10-24 18:00 | 24h | 4.25d |  | David; Erick; Gabriel; Jannio; Sofía | 120h |  | 4,800 | 4,800 |  | 0% |
| 34 | 1.3.2.2 | Pruebas Funcionalidad Dato del Día |  | 24h | 2019-10-23 09:00 | 2019-10-25 19:00 | 20 |  |  | 2019-10-23 09:00 | 2019-10-25 19:00 | 24h | 2.25d |  | Arquitecto Erick Muñoz; David; Erick; Gabriel; Jannio; Sofía | 144h |  | 6,720 | 6,720 |  | 0% |
| 35 | 1.3.2.3 | Pruebas Funcionalidad Notificaciones Push |  | 24h | 2019-10-21 09:00 | 2019-10-23 19:00 | 20 |  |  | 2019-10-21 09:00 | 2019-10-23 19:00 | 24h | 4.25d |  | David; Erick; Gabriel; Jannio; Sofía | 120h |  | 4,800 | 4,800 |  | 0% |
| 36 | 1.3.3 | **Fase II.3 Pruebas Integrales** |  | 3.5d | 2019-10-28 09:00 | 2019-10-31 13:00 |  |  |  | 2019-10-28 09:00 | 2019-10-31 13:00 | 3.5d | 2.25d | 0d |  | 144h |  | 6,720 | 6,720 |  | 0% |
| 37 | 1.3.3.1 | Pruebas Integrales al Sistema |  | 24h | 2019-10-28 09:00 | 2019-10-31 13:00 | 32 |  |  | 2019-10-28 09:00 | 2019-10-31 13:00 | 24h | 2.25d | 0d | Arquitecto Erick Muñoz; David; Erick; Gabriel; Jannio; Sofía | 144h |  | 6,720 | 6,720 |  | 0% |
| 38 | 1.3.4 | Hito 4: Acta de Entrega de Base de Datos con la Información Registrada | milestone | 0d | 2019-10-31 13:00 | 2019-10-31 13:00 | 37 |  |  | 2019-10-31 13:00 | 2019-10-31 13:00 |  | 3.75d |  |  |  |  |  |  |  | 0% |
| 39 | 1.4 | **Etapa III - Aceptación del Proyecto** |  | 1d | 2019-10-30 09:00 | 2019-10-30 19:00 |  |  |  | 2019-10-30 09:00 | 2019-10-30 19:00 | 1d |  |  |  | 80h |  | 4,240 | 4,240 |  | 0% |
| 40 | 1.4.1 | **Fase III.1 Pruebas de Aceptación** |  | 1d | 2019-10-31 15:00 | 2019-11-01 13:00 |  |  |  | 2019-10-31 15:00 | 2019-11-01 13:00 | 1d | 2.25d | 0d |  | 56h |  | 3,040 | 3,040 |  | 0% |
| 41 | 1.4.1.1 | Reunión con el Cliente: Revisión del Sistema y Manuales |  | 8h | 2019-10-31 15:00 | 2019-11-01 13:00 | 36 |  |  | 2019-10-31 15:00 | 2019-11-01 13:00 | 8h | 2.25d | 0d | Arquitecto Erick Muñoz; Proyect Manager Jannio; David; Erick; Gabriel; Jannio; Sofía | 56h |  | 3,040 | 3,040 |  | 0% |
| 42 | 1.4.2 | Hito 5: Acta de Entrega del Código Fuente | milestone | 0d? | 2019-11-01 13:00 | 2019-11-01 13:00 | 41 |  |  | 2019-11-01 13:00 | 2019-11-01 13:00 |  | 2.75d |  |  |  |  |  |  |  | 0% |
| 43 | 1.4.3 | Hito 6: Acta de Entrega del Manual de Usuario y Manual Técnico | milestone | 0d? | 2019-11-01 13:00 | 2019-11-01 13:00 | 41 |  |  | 2019-11-01 13:00 | 2019-11-01 13:00 |  | 2.75d |  |  |  |  |  |  |  | 0% |
| 44 | 1.4.4 | **Fase III.2 Aceptación del Cliente** |  | 0.5d | 2019-11-01 15:00 | 2019-11-01 19:00 |  |  |  | 2019-11-01 15:00 | 2019-11-01 19:00 | 0.5d | 2.25d |  |  | 24h |  | 1,200 | 1,200 |  | 0% |
| 45 | 1.4.4.1 | Reunión de Aceptación y Finalización del Proyecto |  | 4h | 2019-11-01 15:00 | 2019-11-01 19:00 | 40 |  |  | 2019-11-01 15:00 | 2019-11-01 19:00 | 4h | 2.25d | 0d | Proyect Manager Jannio; David; Erick; Gabriel; Jannio; Sofía | 24h |  | 1,200 | 1,200 |  | 0% |
| 46 | 1.4.5 | Hito 7: Acta de Finalización del Proyecto | milestone | 0h | 2019-11-01 19:00 | 2019-11-01 19:00 | 45 |  |  | 2019-11-01 19:00 | 2019-11-01 19:00 |  | 2.25d |  |  |  |  |  |  |  | 0% |
